# PPCLINICA

Schedule from MS Project, 2022-11-08 to 2022-12-02, 3 hours a day, costs in R$, A marks actual dates.

## Calendars

- Padrão: Mon-Fri 09:00-12:00, 13:00-18:00; Sat-Sun off.

## Resources

| Resource | Rate |
| --- | --- |
| Vinicius | 30 |
| Lima | 30 |
| GP Externo |  |
| Natalia | 30 |
| Salles | 30 |
| Pedro | 30 |

## Schedule

| ID | WBS | Task | Type | Duration | Start | Finish | Predecessors | Complete | Remaining | Actual start | Baseline start | Baseline finish | Baseline duration | Total slack | Free slack | Constraint | Resources | Work | Actual work | Cost | Baseline cost | Actual cost |
| --- | --- | --- | --- | --- | --- | --- | --- | --- | --- | --- | --- | --- | --- | --- | --- | --- | --- | --- | --- | --- | --- | --- |
| 1 | 1 | **Projeto Rede de Filiais** |  | 48.67d? | 2022-11-08 09:00 | 2022-12-02 11:00 |  | 13% | 42.29d? | 2022-11-08 08:00 | 2022-11-08 09:00 | 2022-12-02 11:00 | 48.67d? |  |  |  |  | 117.33h | 23.2h | 2,890 | 2,890 | 696 |
| 2 | 1.1 | **Prospecção** |  | 0.5d | 2022-11-08 09:00 A | 2022-11-08 10:30 A |  | 100% |  |  | 2022-11-08 09:00 | 2022-11-08 10:30 | 0.5d |  |  |  |  | 6h | 6h | 180 | 180 | 180 |
| 3 | 1.1.1 | **Estudo do tema** |  | 0.5d | 2022-11-08 09:00 A | 2022-11-08 10:30 A |  | 100% |  |  | 2022-11-08 09:00 | 2022-11-08 10:30 | 0.5d |  |  |  |  | 6h | 6h | 180 | 180 | 180 |
| 4 | 1.1.1.1 | Estudar Domínio de Aplicação |  | 0.33d | 2022-11-08 09:00 A | 2022-11-08 10:00 A |  | 100% |  |  | 2022-11-08 09:00 | 2022-11-08 10:00 | 0.33d |  |  | start no earlier than 2022-09-07 09:00 | Lima; Vinicius; Natalia; Pedro; Salles | 5h | 5h | 150 | 150 | 150 |
| 5 | 1.1.1.2 | Divisão de tarefas |  | 0.17d | 2022-11-08 10:00 A | 2022-11-08 10:30 A | 4 | 100% |  |  | 2022-11-08 10:00 | 2022-11-08 10:30 | 0.17d |  |  |  | Lima; Vinicius | 1h | 1h | 30 | 30 | 30 |
| 6 | 1.2 | **Análise** |  | 4.5d | 2022-11-08 09:00 A | 2022-11-09 15:30 |  | 64% | 1.62d |  | 2022-11-08 09:00 | 2022-11-09 15:30 | 4.5d | 0d |  |  |  | 21h | 14h | 630 | 630 | 420 |
| 7 | 1.2.1 | **Documento de Requisitos** |  | 1.5d | 2022-11-08 09:00 A | 2022-11-08 14:30 A |  | 100% |  |  | 2022-11-08 09:00 | 2022-11-08 14:30 | 1.5d |  |  |  |  | 5h | 5h | 150 | 150 | 150 |
| 8 | 1.2.1.1 | Elaborar DRE |  | 0.83d | 2022-11-08 10:30 A | 2022-11-08 13:30 A | 3 | 100% |  |  | 2022-11-08 10:30 | 2022-11-08 13:30 | 0.83d |  |  |  | Natalia; Vinicius | 4h | 4h | 120 | 120 | 120 |
| 9 | 1.2.1.2 | Revisar DRE |  | 0.33d | 2022-11-08 13:30 A | 2022-11-08 14:30 A | 8 | 100% |  |  | 2022-11-08 13:30 | 2022-11-08 14:30 | 0.33d |  |  |  | Lima | 1h | 1h | 30 | 30 | 30 |
| 10 | 1.2.1.3 | Submeter DRE para Aprovação do Cliente | milestone | 0d | 2022-11-08 09:00 A | 2022-11-08 09:00 A |  | 100% |  |  | 2022-11-08 09:00 | 2022-11-08 09:00 | 0d |  |  |  |  |  |  |  |  |  |
| 11 | 1.2.2 | **Est. Prel. Tamanho** |  | 1.67d | 2022-11-08 14:30 A | 2022-11-09 10:30 A |  | 100% |  |  | 2022-11-08 14:30 | 2022-11-09 10:30 | 1.67d |  |  |  |  | 5h | 5h | 150 | 150 | 150 |
| 12 | 1.2.2.1 | Estimar Tamanho do Projeto |  | 1d | 2022-11-08 14:30 A | 2022-11-08 17:30 A | 7 | 100% |  |  | 2022-11-08 14:30 | 2022-11-08 17:30 | 1d |  |  |  | Salles | 3h | 3h | 90 | 90 | 90 |
| 13 | 1.2.2.2 | Revisar Estimativa de Tamanho do Projeto |  | 0.67d | 2022-11-08 17:30 A | 2022-11-09 10:30 A | 12 | 100% |  |  | 2022-11-08 17:30 | 2022-11-09 10:30 | 0.67d |  |  |  | Natalia | 2h | 2h | 60 | 60 | 60 |
| 14 | 1.2.3 | **Est. Prel Cronograma** |  | 1.33d | 2022-11-09 10:30 A | 2022-11-09 15:30 A |  | 100% |  |  | 2022-11-09 10:30 | 2022-11-09 15:30 | 1.33d |  |  |  |  | 4h | 4h | 120 | 120 | 120 |
| 15 | 1.2.3.1 | Elaborar Cronograma Preliminar |  | 0.67d | 2022-11-09 10:30 A | 2022-11-09 13:30 A | 11 | 100% |  |  | 2022-11-09 10:30 | 2022-11-09 13:30 | 0.67d |  |  |  | Salles | 2h | 2h | 60 | 60 | 60 |
| 16 | 1.2.3.2 | Revisar Cronograma Preliminar |  | 0.67d | 2022-11-09 13:30 A | 2022-11-09 15:30 A | 15 | 100% |  |  | 2022-11-09 13:30 | 2022-11-09 15:30 | 0.67d |  |  |  | Natalia | 2h | 2h | 60 | 60 | 60 |
| 17 | 1.2.4 | **MRB** |  | 2.33d | 2022-11-08 14:30 | 2022-11-09 13:30 |  |  |  |  | 2022-11-08 14:30 | 2022-11-09 13:30 | 2.33d | 0.4d |  |  |  | 7h |  | 210 | 210 |  |
| 18 | 1.2.4.1 | Elaborar MRB |  | 1.67d | 2022-11-08 14:30 | 2022-11-09 10:30 | 7 |  |  |  | 2022-11-08 14:30 | 2022-11-09 10:30 | 1.67d | 0.4d | 0d |  | Pedro | 5h |  | 150 | 150 |  |
| 19 | 1.2.4.2 | Revisar MRB |  | 0.67d | 2022-11-09 10:30 | 2022-11-09 13:30 | 18 |  |  |  | 2022-11-09 10:30 | 2022-11-09 13:30 | 0.67d | 0.4d | 0d |  | Lima | 2h |  | 60 | 60 |  |
| 20 | 1.3 | **Projeto** |  | 2.33d | 2022-11-09 13:30 | 2022-11-10 11:30 |  |  |  |  | 2022-11-09 13:30 | 2022-11-10 11:30 | 2.33d | 0.4d | 0d |  |  | 5h |  | 150 | 150 |  |
| 21 | 1.3.1 | **Diagrama de Classes** |  | 2.33d | 2022-11-09 13:30 | 2022-11-10 11:30 |  |  |  |  | 2022-11-09 13:30 | 2022-11-10 11:30 | 2.33d | 0.4d |  |  |  | 5h |  | 150 | 150 |  |
| 22 | 1.3.1.1 | Elaborar Diagrama de Classe |  | 1d | 2022-11-09 13:30 | 2022-11-09 16:30 | 19 |  |  |  | 2022-11-09 13:30 | 2022-11-09 16:30 | 1d | 0.4d | 0d |  | Pedro | 3h |  | 90 | 90 |  |
| 23 | 1.3.1.2 | Revisar Diagrama de Classe |  | 0.67d | 2022-11-09 16:30 | 2022-11-10 09:30 | 22 |  |  |  | 2022-11-09 16:30 | 2022-11-10 09:30 | 0.67d | 0.4d | 0d |  | Natalia | 2h |  | 60 | 60 |  |
| 24 | 1.3.1.3 | Atualizar MRB |  | 0.67d | 2022-11-10 09:30 | 2022-11-10 11:30 | 23 |  |  |  | 2022-11-10 09:30 | 2022-11-10 11:30 | 0.67d | 0.4d |  |  |  |  |  |  |  |  |

| ID | WBS | Task | Duration | Start | Finish | Predecessors | Complete | Remaining | Baseline start | Baseline finish | Baseline duration | Total slack | Free slack | Resources | Work | Actual work | Cost | Baseline cost | Actual cost |
| --- | --- | --- | --- | --- | --- | --- | --- | --- | --- | --- | --- | --- | --- | --- | --- | --- | --- | --- | --- |
| 25 | 1.4 | **Planejamento** | 2.13d? | 2022-11-10 11:30 A | 2022-11-11 09:54 |  | 50% | 1.07d? | 2022-11-10 11:30 | 2022-11-11 09:54 | 2.13d? | 22.64d | 2.37d |  | 6h | 3.2h | 180 | 180 | 96 |
| 26 | 1.4.1 | Pesquisar Soluções Existentes | 1d? | 2022-11-10 11:30 A | 2022-11-10 14:30 | 20 | 73% | 0.27d? | 2022-11-10 11:30 | 2022-11-10 14:30 | 1d? | 23.64d | 0d | Lima; Vinicius | 4h | 3.2h | 120 | 120 | 96 |
| 27 | 1.4.2 | Definir Linguagens e Frameworks | 0.3d? | 2022-11-10 14:30 | 2022-11-11 09:24 | 26 |  |  | 2022-11-10 14:30 | 2022-11-11 09:24 | 0.3d? | 22.64d | 0d | Lima; Vinicius | 1h |  | 30 | 30 |  |
| 28 | 1.4.3 | Revisar Divisão de tarefas | 0.17d? | 2022-11-11 09:24 | 2022-11-11 09:54 | 27 |  |  | 2022-11-11 09:24 | 2022-11-11 09:54 | 0.17d? | 22.64d |  | Lima; Vinicius | 1h |  | 30 | 30 |  |
| 29 | 1.5 | **Desenvolvimento** | 23.13d? | 2022-11-14 08:00 | 2022-11-24 14:24 |  |  |  | 2022-11-14 08:00 | 2022-11-24 14:24 | 23.13d? |  |  |  | 69h |  | 1,470 | 1,470 |  |
| 30 | 1.5.1 | **Release 01** | 14.83d? | 2022-11-14 09:00 | 2022-11-21 14:30 |  |  |  | 2022-11-14 09:00 | 2022-11-21 14:30 | 14.83d? | 20.28d |  |  | 69h |  | 1,470 | 1,470 |  |
| 31 | 1.5.1.1 | **Implementação** | 14.67d? | 2022-11-14 09:00 | 2022-11-21 14:00 |  |  |  | 2022-11-14 09:00 | 2022-11-21 14:00 | 14.67d? | 20.28d |  |  | 60h |  | 1,200 | 1,200 |  |
| 32 | 1.5.1.1.1 | **Requisitos Funcionais de Cliente 01** | 3.67d? | 2022-11-14 09:00 | 2022-11-15 12:00 |  |  |  | 2022-11-14 09:00 | 2022-11-15 12:00 | 3.67d? | 20.28d | 0d |  | 16h |  | 480 | 480 |  |
| 33 | 1.5.1.1.1.1 | Implementar RFS01 | 0.67d | 2022-11-14 09:00 | 2022-11-14 11:00 | 25 |  |  | 2022-11-14 09:00 | 2022-11-14 11:00 | 0.67d | 20.28d | 0d | Vinicius; Lima | 4h |  | 120 | 120 |  |
| 34 | 1.5.1.1.1.2 | Implementar RFS02 | 1d? | 2022-11-14 11:00 | 2022-11-14 14:00 | 33 |  |  | 2022-11-14 11:00 | 2022-11-14 14:00 | 1d? | 21.28d | 0d | Vinicius; Lima | 4h |  | 120 | 120 |  |
| 35 | 1.5.1.1.1.3 | Implementar RFS03 | 1d? | 2022-11-14 14:00 | 2022-11-15 10:00 | 34 |  |  | 2022-11-14 14:00 | 2022-11-15 10:00 | 1d? | 21.28d | 0d | Vinicius; Lima | 4h |  | 120 | 120 |  |
| 36 | 1.5.1.1.1.4 | Implementar RFS04 | 0.67d? | 2022-11-15 10:00 | 2022-11-15 12:00 | 35 |  |  | 2022-11-15 10:00 | 2022-11-15 12:00 | 0.67d? | 21.28d |  | Vinicius; Lima | 4h |  | 120 | 120 |  |
| 37 | 1.5.1.1.2 | **Requisitos Funcionais de Cliente 02** | 3d | 2022-11-15 12:00 | 2022-11-16 14:00 |  |  |  | 2022-11-15 12:00 | 2022-11-16 14:00 | 3d | 21.28d | 0d |  | 12h |  | 360 | 360 |  |
| 38 | 1.5.1.1.2.1 | Implementar RFS05 | 1d | 2022-11-15 12:00 | 2022-11-15 15:00 | 32 |  |  | 2022-11-15 12:00 | 2022-11-15 15:00 | 1d | 21.28d | 0d | Vinicius; Lima | 4h |  | 120 | 120 |  |
| 39 | 1.5.1.1.2.2 | Implementar RFS06 | 1.33d | 2022-11-15 15:00 | 2022-11-16 11:00 | 38 |  |  | 2022-11-15 15:00 | 2022-11-16 11:00 | 1.33d | 21.28d | 0d | Vinicius; Lima | 4h |  | 120 | 120 |  |
| 40 | 1.5.1.1.2.3 | Implementar RFS07 | 1d | 2022-11-16 11:00 | 2022-11-16 14:00 | 39 |  |  | 2022-11-16 11:00 | 2022-11-16 14:00 | 1d | 21.28d |  | Vinicius; Lima | 4h |  | 120 | 120 |  |
| 41 | 1.5.1.1.3 | **Requisitos Funcionais de Cliente 03** | 8d? | 2022-11-16 14:00 | 2022-11-21 14:00 |  |  |  | 2022-11-16 14:00 | 2022-11-21 14:00 | 8d? | 21.28d | 0d |  | 12h |  | 360 | 360 |  |
| 42 | 1.5.1.1.3.1 | Implementar RFS08 | 3d? | 2022-11-16 14:00 | 2022-11-17 14:00 | 37 |  |  | 2022-11-16 14:00 | 2022-11-17 14:00 | 3d? | 21.28d | 0d | Vinicius; Lima | 4h |  | 120 | 120 |  |
| 43 | 1.5.1.1.3.2 | Implementar RFS09 | 3d? | 2022-11-17 14:00 | 2022-11-18 14:00 | 42 |  |  | 2022-11-17 14:00 | 2022-11-18 14:00 | 3d? | 21.28d | 0d | Vinicius; Lima | 4h |  | 120 | 120 |  |
| 44 | 1.5.1.1.3.3 | Implementar RFS10 | 3d? | 2022-11-18 14:00 | 2022-11-21 14:00 | 43 |  |  | 2022-11-18 14:00 | 2022-11-21 14:00 | 3d? | 21.28d |  | Vinicius; Lima | 4h |  | 120 | 120 |  |
| 45 | 1.5.1.1.4 | **Requisitos Não Funcionais de Cliente** | 2.67d? | 2022-11-14 09:00 | 2022-11-14 18:00 |  |  |  | 2022-11-14 09:00 | 2022-11-14 18:00 | 2.67d? | 30.78d |  |  | 20h |  |  |  |  |
| 46 | 1.5.1.1.4.1 | Implementar RNF01 | 2.67d? | 2022-11-14 09:00 | 2022-11-14 18:00 |  |  |  | 2022-11-14 09:00 | 2022-11-14 18:00 | 2.67d? | 30.78d | 0d |  | 10h |  |  |  |  |
| 47 | 1.5.1.1.4.2 | Implementar RNF02 | 2.67d? | 2022-11-14 09:00 | 2022-11-14 18:00 |  |  |  | 2022-11-14 09:00 | 2022-11-14 18:00 | 2.67d? | 30.78d | 0d |  | 10h |  |  |  |  |
| 48 | 1.5.1.2 | **Teste** | 12.17d? | 2022-11-15 09:00 | 2022-11-21 14:30 |  |  |  | 2022-11-15 09:00 | 2022-11-21 14:30 | 12.17d? | 21.28d | 0d |  | 9h |  | 270 | 270 |  |
| 49 | 1.5.1.2.1 | Testar RC01 | 0.17d | 2022-11-15 13:00 | 2022-11-15 13:30 | 32 |  |  | 2022-11-15 13:00 | 2022-11-15 13:30 | 0.17d | 32.28d |  | Salles; Pedro | 1h |  | 30 | 30 |  |
| 50 | 1.5.1.2.2 | Testar RC02 | 0.31d | 2022-11-16 14:00 | 2022-11-16 14:56 | 37 |  |  | 2022-11-16 14:00 | 2022-11-16 14:56 | 0.31d | 29.13d |  | Salles; Pedro | 1h |  | 30 | 30 |  |
| 51 | 1.5.1.2.3 | Testar RC03 | 0.17d | 2022-11-21 14:00 | 2022-11-21 14:30 | 41 |  |  | 2022-11-21 14:00 | 2022-11-21 14:30 | 0.17d | 21.28d |  | Salles; Pedro | 1h |  | 30 | 30 |  |
| 52 | 1.5.1.2.4 | Testar RNF 01 | 2.67d? | 2022-11-15 09:00 | 2022-11-15 18:00 | 46 |  |  | 2022-11-15 09:00 | 2022-11-15 18:00 | 2.67d? | 30.78d |  | Salles; Pedro | 3h |  | 90 | 90 |  |
| 53 | 1.5.1.2.5 | Testar RNF 02 | 2.67d? | 2022-11-15 09:00 | 2022-11-15 18:00 | 47 |  |  | 2022-11-15 09:00 | 2022-11-15 18:00 | 2.67d? | 30.78d |  | Salles; Pedro | 3h |  | 90 | 90 |  |

| ID | WBS | Task | Type | Duration | Start | Finish | Predecessors | Baseline start | Baseline finish | Baseline duration | Total slack | Free slack | Resources | Work | Cost | Baseline cost |
| --- | --- | --- | --- | --- | --- | --- | --- | --- | --- | --- | --- | --- | --- | --- | --- | --- |
| 54 | 1.6 | **Monitoramento e Controle** |  | 35.67d? | 2022-11-08 08:00 | 2022-11-25 11:00 |  | 2022-11-08 08:00 | 2022-11-25 11:00 | 35.67d? |  |  |  | 2h | 60 | 60 |
| 55 | 1.6.1 | Acompanhar Projeto |  | 0.67d | 2022-11-08 09:00 | 2022-11-08 11:00 |  | 2022-11-08 09:00 | 2022-11-08 11:00 | 0.67d | 48d |  | Salles | 2h | 60 | 60 |
| 56 | 1.6.2 | **Gerência de Configuração** |  | 1.33d? | 2022-11-08 08:00 | 2022-11-08 14:00 |  | 2022-11-08 08:00 | 2022-11-08 14:00 | 1.33d? | 47.33d |  |  |  |  |  |
| 57 | 1.6.2.1 | Elaborar Branch | milestone | 0d? | 2022-11-08 08:00 | 2022-11-08 08:00 |  | 2022-11-08 08:00 | 2022-11-08 08:00 | 0d? | 48.67d |  |  |  |  |  |
| 58 | 1.6.2.2 | Realizar Merge da Branch X para a Master |  | 1.33d? | 2022-11-08 09:00 | 2022-11-08 14:00 |  | 2022-11-08 09:00 | 2022-11-08 14:00 | 1.33d? | 47.33d |  |  |  |  |  |
| 59 | 1.7 | **Fechamento** |  | 1.56d? | 2022-11-21 14:30 | 2022-11-22 10:10 |  | 2022-11-21 14:30 | 2022-11-22 10:10 | 1.56d? | 20.81d |  |  | 4.33h | 100 | 100 |
| 60 | 1.7.1 | Teste do Sistema |  | 0.28d? | 2022-11-21 14:30 | 2022-11-22 09:10 | 48 | 2022-11-21 14:30 | 2022-11-22 09:10 | 0.28d? | 20.81d | 0d | Vinicius; Natalia; Pedro; Salles; Lima | 3.33h | 100 | 100 |
| 61 | 1.7.2 | Aprovaçao do Cliente |  | 0.33d | 2022-11-22 09:10 | 2022-11-22 10:10 | 60 | 2022-11-22 09:10 | 2022-11-22 10:10 | 0.33d | 20.81d | 0d | GP Externo | 1h |  |  |
| 62 | 1.8 | **Controle de Mudanças** |  | 0.8d? | 2022-11-22 10:10 | 2022-11-22 13:34 |  | 2022-11-22 10:10 | 2022-11-22 13:34 | 0.8d? | 20.81d |  |  | 4h | 120 | 120 |
| 63 | 1.8.1 | Realizar Mudanças Solicitas pelo Cliente |  | 0.8d? | 2022-11-22 10:10 | 2022-11-22 13:34 | 61 | 2022-11-22 10:10 | 2022-11-22 13:34 | 0.8d? | 20.81d |  | Vinicius; Lima | 4h | 120 | 120 |
